# SGC

Schedule from MS Project, 2018-11-01 to 2019-06-14, costs in R$.

## Calendars

- Padrão: Mon-Fri 09:00-12:00, 13:00-18:00; Sat-Sun off.

## Resources

| Resource | Rate |
| --- | --- |
| Henrique | 100 |
| Matheus | 100 |
| Cliente |  |
| GP Externo | 200 |

## Schedule

| ID | WBS | Task | Duration | Start | Finish | Predecessors | Baseline start | Baseline finish | Baseline duration | Total slack | Free slack | Resources | Work | Cost | Baseline cost |
| --- | --- | --- | --- | --- | --- | --- | --- | --- | --- | --- | --- | --- | --- | --- | --- |
| 1 | 1 | **Projeto SGC - Chokoart** | 162d? | 2018-11-01 09:00 | 2019-06-14 18:00 |  | 2018-11-01 09:00 | 2018-12-17 11:45 | 32.34d? | 0d |  |  | 117h | 11,800 | 27,700 |
| 2 | 1.1 | **Prospecção** | 1.19d | 2018-11-01 09:00 | 2018-11-02 10:30 |  | 2018-11-01 09:00 | 2018-11-05 11:45 | 2.34d | 113.06d |  |  | 10h | 1,100 | 2,500 |
| 3 | 1.1.1 | **PTEC** | 0.88d | 2018-11-01 09:00 | 2018-11-01 17:00 |  | 2018-11-01 09:00 | 2018-11-02 15:00 | 1.62d | 113.06d |  |  | 7h | 600 | 1,200 |
| 4 | 1.1.1.1 | Estudar domínio de aplicação | 0.38d | 2018-11-01 09:00 | 2018-11-01 12:00 |  | 2018-11-01 09:00 | 2018-11-01 16:00 | 0.75d | 113.06d | 0d | Henrique | 3h | 300 | 600 |
| 5 | 1.1.1.2 | Redigir PTEC | 0.25d | 2018-11-01 13:00 | 2018-11-01 15:00 | 4 | 2018-11-01 16:00 | 2018-11-02 11:00 | 0.5d | 113.06d | 0d | Matheus | 2h | 200 | 400 |
| 6 | 1.1.1.3 | Revisar PTEC | 0.12d | 2018-11-01 15:00 | 2018-11-01 16:00 | 5 | 2018-11-02 11:00 | 2018-11-02 14:00 | 0.25d | 113.06d | 0d | Matheus | 1h | 100 | 200 |
| 7 | 1.1.1.4 | Aprovar PTEC | 0.12d | 2018-11-01 16:00 | 2018-11-01 17:00 | 6 | 2018-11-02 14:00 | 2018-11-02 15:00 | 0.12d | 113.06d | 0d | Cliente | 1h |  |  |
| 8 | 1.1.2 | **Estimativa Preliminar de Tamanho** | 0.19d | 2018-11-01 17:00 | 2018-11-02 09:30 |  | 2018-11-02 15:00 | 2018-11-05 09:45 | 0.47d | 113.06d |  |  | 2h | 300 | 900 |
| 9 | 1.1.2.1 | Estimar Tamanho do Projeto | 0.06d | 2018-11-01 17:00 | 2018-11-01 17:30 | 7 | 2018-11-02 15:00 | 2018-11-02 15:45 | 0.09d | 113.06d | 0d | Matheus; Henrique | 1h | 100 | 300 |
| 10 | 1.1.2.2 | Revisar Est. Prel. De Tam. | 0.12d | 2018-11-01 17:30 | 2018-11-02 09:30 | 9 | 2018-11-02 15:45 | 2018-11-05 09:45 | 0.38d | 113.06d | 0d | GP Externo | 1h | 200 | 600 |
| 11 | 1.1.3 | **Cronograma e Orçamentos Preliminares** | 0.12d | 2018-11-02 09:30 | 2018-11-02 10:30 |  | 2018-11-05 09:45 | 2018-11-05 11:45 | 0.25d | 113.06d |  |  | 1h | 200 | 400 |
| 12 | 1.1.3.1 | Revisar Estimativas de Orçamento e Cronograma Preliminar | 0.12d | 2018-11-02 09:30 | 2018-11-02 10:30 | 10 | 2018-11-05 09:45 | 2018-11-05 11:45 | 0.25d | 113.06d | 110.81d | GP Externo | 1h | 200 | 400 |
| 13 | 1.2 | **Análise** | 4.25d | 2019-04-08 09:00 | 2019-04-12 11:00 |  | 2018-11-05 11:45 | 2018-11-12 10:45 | 4.88d | 0d |  |  | 6h | 600 | 3,900 |
| 14 | 1.2.1 | **Documento de Requisitos** | 2.62d | 2019-04-08 09:00 | 2019-04-10 15:00 |  | 2018-11-05 11:45 | 2018-11-08 14:45 | 3.25d |  |  |  | 3h | 300 | 2,600 |
| 15 | 1.2.1.1 | Reunir-se com o cliente | 0.12d | 2019-04-08 09:00 | 2019-04-08 10:00 | 12 | 2018-11-05 11:45 | 2018-11-06 16:45 | 1.5d | 2.25d | 0d | Henrique | 1h | 100 | 1,200 |
| 16 | 1.2.1.2 | Revisar DRE | 0.12d | 2019-04-08 10:00 | 2019-04-08 11:00 | 15 | 2018-11-06 16:45 | 2018-11-07 16:45 | 1d | 2.25d | 0d | Matheus | 1h | 100 | 800 |
| 17 | 1.2.1.3 | Submeter DRE para aprovação do Cliente | 0.12d | 2019-04-08 11:00 | 2019-04-08 12:00 | 16 | 2018-11-07 16:45 | 2018-11-08 14:45 | 0.75d | 2.25d |  | Henrique | 1h | 100 | 600 |
| 18 | 1.2.2 | **MRB** | 1.25d | 2019-04-11 09:00 | 2019-04-12 11:00 |  | 2018-11-08 14:45 | 2018-11-12 10:45 | 1.62d |  |  |  | 3h | 300 | 1,300 |
| 19 | 1.2.2.1 | Elaborar MRB | 0.25d | 2019-04-11 09:00 | 2019-04-11 11:00 | 17 | 2018-11-08 14:45 | 2018-11-09 15:45 | 1.12d | 0.88d | 0d | Matheus | 2h | 200 | 900 |
| 20 | 1.2.2.2 | Revisar MRB | 0.12d | 2019-04-11 11:00 | 2019-04-11 12:00 | 19 | 2018-11-09 15:45 | 2018-11-12 10:45 | 0.5d | 0.88d | 0d | Henrique | 1h | 100 | 400 |
| 21 | 1.3 | **Projeto** | 0.62d | 2019-04-11 13:00 | 2019-04-11 18:00 |  | 2018-11-12 10:45 | 2018-11-14 09:45 | 1.88d | 44d |  |  | 5h | 500 | 1,500 |
| 22 | 1.3.1 | **Diagrama de Classes** | 0.25d | 2019-04-11 13:00 | 2019-04-11 15:00 |  | 2018-11-12 10:45 | 2018-11-12 17:45 | 0.75d | 44d |  |  | 2h | 200 | 600 |
| 23 | 1.3.1.1 | Revisar Diagrama de Classes | 0.25d | 2019-04-11 13:00 | 2019-04-11 15:00 | 20 | 2018-11-12 10:45 | 2018-11-12 17:45 | 0.75d | 44d | 0d | Matheus | 2h | 200 | 600 |
| 24 | 1.3.2 | **Modelo Entidade Relacionamento** | 0.38d | 2019-04-11 15:00 | 2019-04-11 18:00 |  | 2018-11-12 17:45 | 2018-11-14 09:45 | 1.12d | 44d |  |  | 3h | 300 | 900 |
| 25 | 1.3.2.1 | Elaborar MER | 0.25d | 2019-04-11 15:00 | 2019-04-11 17:00 | 23 | 2018-11-12 17:45 | 2018-11-13 15:45 | 0.75d | 25.88d | 0d | Henrique | 2h | 200 | 600 |
| 26 | 1.3.2.2 | Revisar MER | 0.12d | 2019-04-11 17:00 | 2019-04-11 18:00 | 25 | 2018-11-13 15:45 | 2018-11-14 09:45 | 0.38d | 25.88d | 4d | Matheus | 1h | 100 | 300 |

| ID | WBS | Task | Type | Duration | Start | Finish | Predecessors | Baseline start | Baseline finish | Baseline duration | Total slack | Free slack | Constraint | Resources | Work | Cost | Baseline cost |
| --- | --- | --- | --- | --- | --- | --- | --- | --- | --- | --- | --- | --- | --- | --- | --- | --- | --- |
| 27 | 1.4 | **Planejamento** |  | 2d | 2019-04-18 09:00 | 2019-04-19 18:00 |  | 2018-11-14 09:45 | 2018-11-15 17:45 | 1.88d | 40d |  |  |  | 32h | 3,200 | 1,500 |
| 28 | 1.4.1 | Fase de Planejamento e Estudo dos Templates |  | 2d | 2019-04-18 09:00 | 2019-04-19 18:00 | 26 | 2018-11-14 09:45 | 2018-11-15 17:45 | 1.88d | 40d |  | finish no earlier than 2019-04-19 18:00 | Henrique; Matheus | 32h | 3,200 | 1,500 |
| 29 | 1.5 | **Desenvolvimento** |  | 19d? | 2019-05-21 09:00 | 2019-06-14 18:00 |  | 2018-11-15 17:45 | 2018-12-11 09:45 | 17.12d? | 0d |  |  |  | 64h | 6,400 | 14,900 |
| 30 | 1.5.1 | **Release 01** |  | 3d | 2019-05-21 09:00 | 2019-05-24 09:00 |  | 2018-11-15 17:45 | 2018-11-23 09:45 | 5.12d? | 14.88d |  |  |  |  |  | 5,300 |
| 31 | 1.5.1.1 | **Implementação** |  | 2d | 2019-05-21 09:00 | 2019-05-23 09:00 |  | 2018-11-15 17:45 | 2018-11-19 16:45 | 1.88d? | 13d |  |  |  |  |  | 2,400 |
| 32 | 1.5.1.1.1 | Implementação - Manter Funcionários |  | 0.12d | 2019-05-21 09:00 | 2019-05-21 10:00 |  | 2018-11-15 17:45 | 2018-11-19 13:45 | 1.5d? | 14.88d | 0.88d | start no earlier than 2019-05-21 09:00 | Henrique; Matheus |  |  | 1,200 |
| 33 | 1.5.1.1.2 | Implementação - Manter Fornecedores | milestone | 0d | 2019-05-22 09:00 | 2019-05-22 09:00 | 32 | 2018-11-15 17:45 | 2018-11-16 11:45 | 0.38d | 14d | 1d | start no earlier than 2019-05-22 09:00 | Henrique; Matheus |  |  | 300 |
| 34 | 1.5.1.1.3 | Implementação - Manter Produtos | milestone | 0d | 2019-05-23 09:00 | 2019-05-23 09:00 | 33 | 2018-11-16 11:45 | 2018-11-16 15:45 | 0.38d | 13d | 1d | start no earlier than 2019-05-23 09:00 | Henrique; Matheus |  |  | 300 |
| 35 | 1.5.1.2 | **Teste** |  | 2d | 2019-05-22 09:00 | 2019-05-24 09:00 |  | 2018-11-19 16:45 | 2018-11-23 09:45 | 3.25d | 14d |  |  |  |  |  | 2,900 |
| 36 | 1.5.1.2.1 | Teste - Manter Funcionários | milestone | 0d | 2019-05-22 09:00 | 2019-05-22 09:00 | 32 | 2018-11-19 16:45 | 2018-11-22 17:45 | 3.12d | 18d |  | start no earlier than 2019-05-22 09:00 | Henrique; Matheus |  |  | 2,500 |
| 37 | 1.5.1.2.2 | Teste - Manter Fornecedores | milestone | 0d | 2019-05-23 09:00 | 2019-05-23 09:00 | 32 | 2018-11-20 16:45 | 2018-11-23 09:45 | 2.25d | 17d |  | start no earlier than 2019-05-23 09:00 | Henrique; Matheus |  |  | 400 |
| 38 | 1.5.1.2.3 | Teste - Manter Produtos | milestone | 0d | 2019-05-24 09:00 | 2019-05-24 09:00 | 34 |  |  |  | 12d | 2d | start no earlier than 2019-05-24 09:00 | Henrique; Matheus |  |  |  |
| 39 | 1.5.2 | **Release 02** |  | 4d? | 2019-05-28 09:00 | 2019-05-31 18:00 |  | 2018-11-15 17:45 | 2018-11-23 09:45 | 5.12d? | 10d |  |  |  |  |  | 5,300 |
| 40 | 1.5.2.1 | **Implementação** |  | 3d? | 2019-05-28 09:00 | 2019-05-30 18:00 |  | 2018-11-15 17:45 | 2018-11-19 16:45 | 1.88d? | 7d |  |  |  |  |  | 2,400 |
| 41 | 1.5.2.1.1 | Implementação - Manter Pedido de Compra | milestone | 0d? | 2019-05-28 09:00 | 2019-05-28 09:00 | 38 |  |  |  | 10d | 1d | start no earlier than 2019-05-28 09:00 | Henrique; Matheus |  |  |  |
| 42 | 1.5.2.1.2 | Implementação - Manter Cliente | milestone | 0d? | 2019-05-29 09:00 | 2019-05-29 09:00 | 41 |  |  |  | 9d | 1d | start no earlier than 2019-05-29 09:00 | Henrique; Matheus |  |  |  |
| 43 | 1.5.2.1.3 | 0 | milestone | 0d | 2019-05-30 18:00 | 2019-05-30 18:00 | 42 | 2018-11-15 17:45 | 2018-11-19 13:45 | 1.5d? | 7d | 1d | finish no earlier than 2019-05-30 18:00 | Henrique; Matheus |  |  | 1,200 |
| 44 | 1.5.2.2 | **Teste** |  | 3d? | 2019-05-29 09:00 | 2019-05-31 18:00 |  | 2018-11-19 16:45 | 2018-11-23 09:45 | 3.25d | 9d |  |  |  |  |  | 2,900 |
| 45 | 1.5.2.2.1 | Teste - Manter Pedido de Compra | milestone | 0d | 2019-05-29 09:00 | 2019-05-29 09:00 | 41 | 2018-11-19 16:45 | 2018-11-22 17:45 | 3.12d | 13d |  | start no earlier than 2019-05-29 09:00 | Henrique; Matheus |  |  | 2,500 |
| 46 | 1.5.2.2.2 | Teste - Manter Cliente | milestone | 0d? | 2019-05-30 09:00 | 2019-05-30 09:00 | 42 |  |  |  | 12d |  | start no earlier than 2019-05-30 09:00 | Henrique; Matheus |  |  |  |
| 47 | 1.5.2.2.3 | Teste - Manter Pedido de Venda | milestone | 0d | 2019-05-31 18:00 | 2019-05-31 18:00 | 43 | 2018-11-20 16:45 | 2018-11-23 09:45 | 2.25d | 6d | 1d | finish no earlier than 2019-05-31 18:00 | Henrique; Matheus |  |  | 400 |
| 48 | 1.5.3 | **Release 03** |  | 4d? | 2019-06-04 09:00 | 2019-06-07 18:00 |  |  |  |  | 5d |  |  |  | 64h | 6,400 |  |
| 49 | 1.5.3.1 | **Implementação** |  | 4d? | 2019-06-04 09:00 | 2019-06-07 18:00 |  |  |  |  | 5d |  |  |  | 64h | 6,400 |  |
| 50 | 1.5.3.1.1 | Implementação - Manter Demonstrativo do Resultado do Exercício |  | 4d? | 2019-06-04 09:00 | 2019-06-07 18:00 | 47 |  |  |  | 5d |  | finish no earlier than 2019-06-07 18:00 | Henrique; Matheus | 64h | 6,400 |  |
| 51 | 1.5.3.1.2 | Implementação - Manter Movimentação Financeira | milestone | 0d? | 2019-06-05 09:00 | 2019-06-05 09:00 |  |  |  |  | 8d | 1d | start no earlier than 2019-06-05 09:00 | Henrique; Matheus |  |  |  |
| 52 | 1.5.3.1.3 | Implementação - Manter Dados das Contas | milestone | 0d? | 2019-06-06 09:00 | 2019-06-06 09:00 | 51 |  |  |  | 7d | 1d | start no earlier than 2019-06-06 09:00 | Henrique; Matheus |  |  |  |

| ID | WBS | Task | Type | Duration | Start | Finish | Predecessors | Baseline start | Baseline finish | Baseline duration | Total slack | Free slack | Constraint | Resources | Baseline cost |
| --- | --- | --- | --- | --- | --- | --- | --- | --- | --- | --- | --- | --- | --- | --- | --- |
| 53 | 1.5.3.2 | **Teste** |  | 2d? | 2019-06-05 09:00 | 2019-06-07 09:00 |  |  |  |  | 6d |  |  |  |  |
| 54 | 1.5.3.2.1 | Teste - Manter Demonstrativo do Resultado do Exercício | milestone | 0d? | 2019-06-05 09:00 | 2019-06-05 09:00 |  |  |  |  | 8d |  | start no earlier than 2019-06-05 09:00 | Henrique; Matheus |  |
| 55 | 1.5.3.2.2 | Teste - Manter Movimentação Financeira | milestone | 0d? | 2019-06-06 09:00 | 2019-06-06 09:00 | 51 |  |  |  | 7d |  | start no earlier than 2019-06-06 09:00 | Henrique; Matheus |  |
| 56 | 1.5.3.2.3 | Teste - Manter Dados das Contas | milestone | 0d? | 2019-06-07 09:00 | 2019-06-07 09:00 | 52 |  |  |  | 6d | 2d | start no earlier than 2019-06-07 09:00 | Henrique; Matheus |  |
| 57 | 1.5.4 | **Release 4** |  | 4d | 2019-06-11 09:00 | 2019-06-14 18:00 |  |  |  |  |  |  |  |  |  |
| 58 | 1.5.4.1 | **Implementação** |  | 4d | 2019-06-11 09:00 | 2019-06-14 18:00 |  |  |  |  |  |  |  |  |  |
| 59 | 1.5.4.1.1 | Gerar Relatório de Fluxo de Caixa | milestone | 0d | 2019-06-11 09:00 | 2019-06-11 09:00 | 56 |  |  |  | 4d | 0d |  | Henrique; Matheus |  |
| 60 | 1.5.4.1.2 | Gerar Relatório de Vendas | milestone | 0d | 2019-06-12 09:00 | 2019-06-12 09:00 | 59 |  |  |  | 3d | 0d | start no earlier than 2019-06-12 09:00 | Henrique; Matheus |  |
| 61 | 1.5.4.1.3 | Gerar Relatório de Entradas | milestone | 0d | 2019-06-13 09:00 | 2019-06-13 09:00 | 60 |  |  |  | 2d | 0d | start no earlier than 2019-06-13 09:00 | Henrique; Matheus |  |
| 62 | 1.5.4.1.4 | Gerar Relatório de Saídas | milestone | 0d | 2019-06-14 09:00 | 2019-06-14 09:00 | 61 |  |  |  | 1d | 0d | start no earlier than 2019-06-14 09:00 | Henrique; Matheus |  |
| 63 | 1.5.4.2 | **Teste** |  | 3d? | 2019-06-11 09:00 | 2019-06-14 09:00 |  |  |  |  | 1d |  |  |  |  |
| 64 | 1.5.4.2.1 | Teste - Gerar Relatório de Fluxo de Caixa | milestone | 0d | 2019-06-11 09:00 | 2019-06-11 09:00 | 59 |  |  |  | 4d |  | start no earlier than 2018-11-14 09:00 | Henrique; Matheus |  |
| 65 | 1.5.4.2.2 | Teste - Gerar Relatório de Vendas | milestone | 0d | 2019-06-12 09:00 | 2019-06-12 09:00 | 60 |  |  |  | 3d |  |  | Henrique; Matheus |  |
| 66 | 1.5.4.2.3 | Teste - Gerar Relatório de Entradas | milestone | 0d | 2019-06-13 09:00 | 2019-06-13 09:00 | 61 |  |  |  | 2d |  |  | Henrique; Matheus |  |
| 67 | 1.5.4.2.4 | Teste - Gerar Relatório de Saídas | milestone | 0d? | 2019-06-14 09:00 | 2019-06-14 09:00 | 62 |  |  |  | 1d |  |  | Henrique; Matheus |  |
| 68 | 1.6 | **Monitoramento e Controle** |  | 0d | 2018-11-01 09:00 | 2018-11-01 09:00 |  | 2018-12-11 09:45 | 2018-12-11 16:45 | 0.75d | 162d |  |  |  | 600 |
| 69 | 1.6.1 | Acompanhar Projeto | milestone | 0d | 2018-11-01 09:00 | 2018-11-01 09:00 |  | 2018-12-11 09:45 | 2018-12-11 16:45 | 0.75d | 162d | 0d |  | Matheus; Henrique | 600 |
| 70 | 1.7 | **Gerência de Configuração** |  | 0d | 2018-11-01 09:00 | 2018-11-01 09:00 |  | 2018-12-11 16:45 | 2018-12-13 11:45 | 1.5d | 162d |  |  |  | 1,200 |
| 71 | 1.7.1 | Elaborar Branch | milestone | 0d | 2018-11-01 09:00 | 2018-11-01 09:00 | 69 | 2018-12-11 16:45 | 2018-12-12 14:45 | 0.75d | 162d | 0d |  | Henrique | 600 |
| 72 | 1.7.2 | Realizar Merge da Branch X para a Trunk | milestone | 0d | 2018-11-01 09:00 | 2018-11-01 09:00 | 71 | 2018-12-12 14:45 | 2018-12-13 11:45 | 0.75d | 162d | 0d |  | Matheus | 600 |
| 73 | 1.8 | **Fase de Fechamento** |  | 0d | 2018-11-01 09:00 | 2018-11-01 09:00 |  | 2018-12-13 11:45 | 2018-12-17 11:45 | 2d | 162d |  |  |  | 1,600 |
| 74 | 1.8.1 | Fase 1 | milestone | 0d | 2018-11-01 09:00 | 2018-11-01 09:00 | 72 | 2018-12-13 11:45 | 2018-12-14 09:45 | 0.75d | 162d | 0d |  | Henrique; Matheus | 600 |
| 75 | 1.8.2 | Fase 2 | milestone | 0d | 2018-11-01 09:00 | 2018-11-01 09:00 | 74 | 2018-12-14 09:45 | 2018-12-14 15:45 | 0.62d | 162d | 0d |  | Henrique; Matheus | 500 |
| 76 | 1.8.3 | Fase 3 | milestone | 0d | 2018-11-01 09:00 | 2018-11-01 09:00 | 75 | 2018-12-14 15:45 | 2018-12-17 11:45 | 0.62d | 162d |  |  | Henrique; Matheus | 500 |
